Schedule from OmniPlan.
Project start 2016-01-27

## Resources

| Resource | Group |
| --- | --- |
| Resource 1 | staff |
| Equipment 1 | equipment |
| Material 1 | material |
| Group 1 | group |
| 黄玉辉 | staff |
| 李世杰 | staff |

## Schedule

| ID | WBS | Task | Predecessors | Resources | Work |
| --- | --- | --- | --- | --- | --- |
| 1 | 1 | **直播秀_iOS_V0.1.0_开发计划** |  |  |  |
| 2 | 1.1 | **UIUX Framework** |  |  |  |
| 3 | 1.1.1 | TabBarController |  | 黄玉辉 | 7h |
| 4 | 1.1.2 | NavigationController | 3 | 黄玉辉 | 3.5h |
| 5 | 1.2 | **直播广场** | 2 |  |  |
| 6 | 1.2.1 | 直播广场（主界面） |  | 黄玉辉 | 3.5h |
| 7 | 1.2.2 | 好友直播 | 6 | 黄玉辉 | 3.5h |
| 8 | 1.2.3 | 热门直播 | 7 | 黄玉辉 | 3.5h |
| 9 | 1.2.4 | **最新直播** | 8 |  |  |
| 10 | 1.2.4.1 | 最新直播（主界面） |  | 黄玉辉 | 3.5h |
| 11 | 1.2.4.2 | 达人推荐 | 10 | 黄玉辉 | 3.5h |
| 12 | 1.3 | **我的主页** |  |  |  |
| 13 | 1.3.1 | 我的主页（主界面） |  | 李世杰 | 7h |
| 14 | 1.3.2 | 我的直播 | 13 | 李世杰 | 7h |
| 15 | 1.3.3 | 我的关注 | 14 | 李世杰 | 7h |
| 16 | 1.3.4 | 我的粉丝 | 15 | 李世杰 | 3.5h |
| 17 | 1.3.5 | **私信** | 16 |  |  |
| 18 | 1.3.5.1 | 私信（主界面） |  | 李世杰 | 3.5h |
| 19 | 1.3.5.2 | 未关注人消息 | 18 | 李世杰 | 3.5h |
| 20 | 1.3.6 | **编辑资料** | 17 |  |  |
| 21 | 1.3.6.1 | 编辑资料（主界面） |  | 李世杰 | 3.5h |
| 22 | 1.3.6.2 | 选择头像 | 21 | 李世杰 | 3.5h |
| 23 | 1.3.6.3 | 编辑昵称 | 22 | 李世杰 | 1.75h |
| 24 | 1.3.6.4 | 选择性别 | 23 | 李世杰 | 1.75h |
| 25 | 1.3.6.5 | 编辑个性签名 | 24 | 李世杰 | 1.75h |

| ID | WBS | Task | Predecessors | Resources | Work |
| --- | --- | --- | --- | --- | --- |
| 26 | 1.3.7 | **我的收益** | 20 |  |  |
| 27 | 1.3.7.1 | 我的收益（主界面） |  | 李世杰 | 3.5h |
| 28 | 1.3.7.2 | 兑换界面 | 27 | 李世杰 | 3.5h |
| 29 | 1.3.7.3 | 微信提现 | 28 | 李世杰 | 1.75h |
| 30 | 1.3.7.4 | 提现记录 | 29 | 李世杰 | 1.75h |
| 31 | 1.3.8 | 我的等级 | 26 | 李世杰 |  |
| 32 | 1.3.9 | 我的钻石 | 31 | 李世杰 | 3.5h |
| 33 | 1.3.10 | 更改头像 | 32 | 李世杰 | 3.5h |
| 34 | 1.3.11 | **设置** | 33 |  |  |
| 35 | 1.3.11.1 | 设置（主界面） |  | 李世杰 | 1.75h |
| 36 | 1.3.11.2 | 黑名单 | 35 | 李世杰 | 1.75h |
| 37 | 1.3.11.3 | 推送管理 | 36 | 李世杰 | 3.5h |
| 38 | 1.3.11.4 | 关于映客 | 37 | 李世杰 |  |
| 39 | 1.3.11.5 | 用户反馈 | 38 | 李世杰 |  |
| 40 | 1.4 | **TA的主页** | 12 |  |  |
| 41 | 1.4.1 | TA的主页（主界面） |  | 李世杰 | 10.5h |
| 42 | 1.4.2 | TA的直播 | 41 | 李世杰 | 3.5h |
| 43 | 1.4.3 | TA的关注 | 42 | 李世杰 | 3.5h |
| 44 | 1.4.4 | TA的粉丝 | 43 | 李世杰 | 3.5h |
| 45 | 1.5 | **视频直播** | 5 |  |  |
| 46 | 1.5.1 | 视频层 |  | 黄玉辉 | 10.5h |
| 47 | 1.5.2 | **信息层** | 46 |  |  |
| 48 | 1.5.2.1 | 观众列表 |  | 黄玉辉 | 1.75h |
| 49 | 1.5.2.2 | 观众信息 | 48 | 黄玉辉 | 7h |
| 50 | 1.5.2.3 | 消息流 | 49 | 黄玉辉 | 10.5h |
| 51 | 1.5.2.4 | 弹幕流 | 50 | 黄玉辉 | 10.5h |
| 52 | 1.5.2.5 | 礼物流 | 51 | 黄玉辉 | 10.5h |
| 53 | 1.5.2.6 | 消息发送 | 52 | 黄玉辉 | 10.5h |
| 54 | 1.5.2.7 | 礼物发送 | 53 | 黄玉辉 | 10.5h |
| 55 | 1.5.2.8 | 社交分享 | 54 | 黄玉辉 | 1.75h |

| ID | WBS | Task | Predecessors | Resources | Work |
| --- | --- | --- | --- | --- | --- |
| 56 | 1.6 | **视频录制** | 45 |  |  |
| 57 | 1.6.1 | 直播信息 |  | 黄玉辉 | 7h |
| 58 | 1.6.2 | 视频录制 | 57 | 黄玉辉 | 35h |
| 59 | 1.7 | **公共界面** | 40 |  |  |
| 60 | 1.7.1 | 网页浏览 |  | 李世杰 | 3.5h |
| 61 | 1.7.2 | 搜索界面 | 60 | 李世杰 | 7h |
| 62 | 1.7.3 | 映票贡献榜 | 61 | 李世杰 | 7h |
| 63 | 1.7.4 | 聊天界面 | 62 | 李世杰 | 35h |
